# MOHE 2 - 09022010

Schedule from MS Project, 2010-02-01 to 2010-04-16.
Oracle Corporation

## Calendars

- Standard: Mon-Fri 08:00-12:00, 13:00-17:00; Sat-Sun off. Exceptions (off unless hours are given): 2010-02-09 09:00-12:00, 13:00-18:00, 2010-02-15 to 2010-02-16, 2010-02-26.

## Schedule

| ID | WBS | Task | Duration | Start | Finish | Predecessors | Total slack | Free slack |
| --- | --- | --- | --- | --- | --- | --- | --- | --- |
| 1 | 1 | **Design Review & Verification** | 4d | 2010-02-01 | 2010-02-04 |  | 48d |  |
| 2 | 1.1 | Design review of existing taxanonmy, Policy in UCM | 2d | 2010-02-01 | 2010-02-02 |  | 48d | 0d |
| 3 | 1.2 | One instance vs two instance approach confirmation | 2d | 2010-02-01 | 2010-02-02 |  | 48d | 0d |
| 4 | 1.3 | Design review document complete | 2d | 2010-02-03 | 2010-02-04 | 2, 3 | 48d |  |
| 5 | 2 | **Infrastructure (Dev&Stage)** | 19d | 2010-02-01 | 2010-03-02 |  | 0d |  |
| 6 | 2.1 | Setup UCM Development environment | 10d | 2010-02-01 | 2010-02-12 |  | 0d |  |
| 7 | 2.2 | Setup UCM Stagging environment | 4d | 2010-02-17 | 2010-02-22 | 6 | 15d | 0d |
| 8 | 2.3 | Content Replication | 5d | 2010-02-23 | 2010-03-02 | 7 | 33d |  |
| 9 | 3 | **Enabling WCM Content** | 23d | 2010-02-17 | 2010-03-22 | 6 | 19d |  |
| 10 | 3.1 | Finalize the required 22 sections | 2d | 2010-02-17 | 2010-02-18 |  | 19d | 0d |
| 11 | 3.2 | Complete design document | 2d | 2010-02-19 | 2010-02-22 | 10 | 19d | 0d |
| 12 | 3.3 | Templates development | 5d | 2010-02-23 | 2010-03-02 | 11 | 19d | 0d |
| 13 | 3.4 | Portlet development | 5d | 2010-03-03 | 2010-03-09 | 12 | 19d | 0d |
| 14 | 3.5 | SIT | 3d | 2010-03-10 | 2010-03-12 | 13 | 19d | 0d |
| 15 | 3.6 | Deployment to Stagging environment | 2d | 2010-03-15 | 2010-03-16 | 14 | 19d | 0d |
| 16 | 3.7 | UAT | 1d | 2010-03-17 | 2010-03-17 | 15 | 19d | 0d |
| 17 | 3.8 | Deployment to production environment | 2d | 2010-03-18 | 2010-03-19 | 16 | 19d | 0d |
| 18 | 3.9 | Production verification | 1d | 2010-03-22 | 2010-03-22 | 17 | 19d |  |
| 19 | 4 | **Extending Portal search to UCM Search** | 16d | 2010-02-17 | 2010-03-11 | 6 | 0d |  |
| 20 | 4.1 | Finalize the requirements | 1d | 2010-02-17 | 2010-02-17 |  | 0d |  |
| 21 | 4.2 | Complete design document | 2d | 2010-02-18 | 2010-02-19 | 20 | 0d |  |
| 22 | 4.3 | API development | 5d | 2010-02-22 | 2010-03-01 | 21 | 0d |  |
| 23 | 4.4 | SIT | 2d | 2010-03-02 | 2010-03-03 | 22 | 0d |  |
| 24 | 4.5 | Deployment to Stagging environment | 1d | 2010-03-04 | 2010-03-04 | 23 | 0d |  |
| 25 | 4.6 | UAT | 2d | 2010-03-05 | 2010-03-08 | 24 | 0d |  |
| 26 | 4.7 | Deployment to production environment | 2d | 2010-03-09 | 2010-03-10 | 25 | 0d |  |
| 27 | 4.8 | Production verification | 1d | 2010-03-11 | 2010-03-11 | 26 | 0d |  |

| ID | WBS | Task | Duration | Start | Finish | Predecessors | Total slack | Free slack |
| --- | --- | --- | --- | --- | --- | --- | --- | --- |
| 28 | 5 | **WCM workflow & Document workflow** | 17d | 2010-03-12 | 2010-04-05 | 7, 19 | 3d | 0d |
| 29 | 5.1 | Finalize the requirements | 1d | 2010-03-12 | 2010-03-12 |  | 3d | 0d |
| 30 | 5.2 | Complete design document | 1d | 2010-03-15 | 2010-03-15 | 29 | 3d | 0d |
| 31 | 5.3 | Workflow portlets | 5d | 2010-03-16 | 2010-03-22 | 30 | 3d | 0d |
| 32 | 5.4 | SIT | 3d | 2010-03-23 | 2010-03-25 | 31 | 3d | 0d |
| 33 | 5.5 | Deployment to Stagging environment | 2d | 2010-03-26 | 2010-03-29 | 32 | 3d | 0d |
| 34 | 5.6 | UAT | 2d | 2010-03-30 | 2010-03-31 | 33 | 3d | 0d |
| 35 | 5.7 | Deployment to production environment | 2d | 2010-04-01 | 2010-04-02 | 34 | 3d | 0d |
| 36 | 5.8 | Production verification | 1d | 2010-04-05 | 2010-04-05 | 35 | 3d |  |
| 37 | 6 | **UCM Integration with 2 apps** | 15d | 2010-03-12 | 2010-04-01 | 6, 19 | 0d |  |
| 38 | 6.1 | Complete design document | 1d | 2010-03-12 | 2010-03-12 |  | 0d |  |
| 39 | 6.2 | Portlets development | 5d | 2010-03-15 | 2010-03-19 | 38 | 0d |  |
| 40 | 6.3 | SIT | 2d | 2010-03-22 | 2010-03-23 | 39 | 0d |  |
| 41 | 6.4 | Deployment to Stagging environment | 2d | 2010-03-24 | 2010-03-25 | 40 | 0d |  |
| 42 | 6.5 | UAT | 2d | 2010-03-26 | 2010-03-29 | 41 | 0d |  |
| 43 | 6.6 | Deployment to production environment | 2d | 2010-03-30 | 2010-03-31 | 42 | 0d |  |
| 44 | 6.7 | Production verification | 1d | 2010-04-01 | 2010-04-01 | 43 | 0d |  |
| 45 | 7 | **Infrastructure (Prod)** | 11d | 2010-04-02 | 2010-04-16 | 37 | 0d |  |
| 46 | 7.1 | Production verification | 2d | 2010-04-02 | 2010-04-05 |  | 0d |  |
| 47 | 7.2 | (tentative) Setting up contribution repository | 4d | 2010-04-06 | 2010-04-09 | 46 | 0d |  |
| 48 | 7.3 | Deployment from Development to Stagging to Production | 5d | 2010-04-12 | 2010-04-16 | 47 | 0d |  |
| 49 | 8 | **Content Migration** | 6d | 2010-04-06 | 2010-04-13 | 28 | 3d |  |
| 50 | 8.1 | Setup Announcement (1) page in Stagging | 1d | 2010-04-06 | 2010-04-06 |  | 3d | 0d |
| 51 | 8.2 | Setup FAQ (1) page in Stagging | 1d | 2010-04-07 | 2010-04-07 | 50 | 3d | 0d |
| 52 | 8.3 | SIT | 1d | 2010-04-08 | 2010-04-08 | 51 | 3d | 0d |
| 53 | 8.4 | UAT | 1d | 2010-04-09 | 2010-04-09 | 52 | 3d | 0d |
| 54 | 8.5 | Deployment to production environment | 1d | 2010-04-12 | 2010-04-12 | 53 | 3d | 0d |
| 55 | 8.6 | Production verification | 1d | 2010-04-13 | 2010-04-13 | 54 | 3d |  |
